Schedule from MS Project, 2015-08-12 to 2015-12-25, 7.5 hours a day, A marks actual dates.
Sky123.Org

## Calendars

- 标准: Mon-Fri 08:30-11:30, 12:30-17:00; Sat-Sun off. Exceptions (off unless hours are given): 2015-09-03 to 2015-09-05 (胜利日), 2015-09-06 08:30-11:30, 12:30-17:00 (胜利日-补班), 2015-09-26 to 2015-09-27 (中秋节), 2015-10-01 to 2015-10-07 (国庆节), 2015-10-10 08:30-11:30, 12:30-17:00 (国庆-补班).

## Schedule

| ID | WBS | Task | Duration | Start | Finish | Predecessors | Complete | Remaining | Total slack |
| --- | --- | --- | --- | --- | --- | --- | --- | --- | --- |
| 1 | 1 | **离线移动查房APP** | 93d | 2015-08-12 08:30 A | 2015-12-25 17:00 |  | 6% | 87.78d | 0d |
| 2 | 1.1 | **系统框架搭建** | 42d | 2015-08-12 08:30 A | 2015-10-15 17:00 |  | 17% | 35d | 0d |
| 3 | 1.1.1 | android开发环境配置 | 2d | 2015-08-12 08:30 A | 2015-08-13 17:00 A |  | 100% |  |  |
| 4 | 1.1.2 | 项目分层(实体类、数据库访问、业务逻辑、UI、公共库) | 2d | 2015-08-14 08:30 A | 2015-08-17 17:00 A | 3 | 100% |  |  |
| 5 | 1.1.3 | 技术调研 | 5d | 2015-08-18 08:30 A | 2015-08-24 17:00 | 4 | 60% | 2d | 0d |
| 6 | 1.1.4 | 整体UI布局搭建 | 3d | 2015-08-25 08:30 | 2015-08-27 17:00 | 5 |  |  | 0d |
| 7 | 1.1.5 | **系统公共库搭建** | 3d | 2015-08-28 08:30 | 2015-09-01 17:00 |  |  |  | 0d |
| 8 | 1.1.5.1 | http get post请求 | 0.5d | 2015-08-28 08:30 | 2015-08-28 13:15 | 6 |  |  | 0d |
| 9 | 1.1.5.2 | 判断wifi信号 | 0.5d | 2015-08-28 13:15 | 2015-08-28 17:00 | 8 |  |  | 0d |
| 10 | 1.1.5.3 | 系统日志输出类 | 0.5d | 2015-08-31 08:30 | 2015-08-31 13:15 | 9 |  |  | 0d |
| 11 | 1.1.5.4 | 系统异常捕获机制 | 1d | 2015-08-31 13:15 | 2015-09-01 13:15 | 10 |  |  | 0d |
| 12 | 1.1.5.5 | 数据类型转换 | 0.5d | 2015-09-01 13:15 | 2015-09-01 17:00 | 11 |  |  | 0d |
| 13 | 1.1.6 | **android sqlite数据库操作** | 3d | 2015-09-02 08:30 | 2015-09-07 17:00 |  |  |  | 0d |
| 14 | 1.1.6.1 | 集成数据库操作框架 | 1d | 2015-09-02 08:30 | 2015-09-02 17:00 | 12 |  |  | 0d |
| 15 | 1.1.6.2 | 实现数据库操作示例 | 2d | 2015-09-06 08:30 | 2015-09-07 17:00 | 14 |  |  | 0d |
| 16 | 1.1.7 | **json转换** | 2d | 2015-09-08 08:30 | 2015-09-09 17:00 |  |  |  | 0d |
| 17 | 1.1.7.1 | 集成json转换框架 | 1d | 2015-09-08 08:30 | 2015-09-08 17:00 | 15 |  |  | 0d |
| 18 | 1.1.7.2 | 实现json转换示例 | 1d | 2015-09-09 08:30 | 2015-09-09 17:00 | 17 |  |  | 0d |
| 19 | 1.1.8 | **数据同步** | 9d | 2015-09-10 08:30 | 2015-09-22 17:00 |  |  |  | 0d |
| 20 | 1.1.8.1 | 后台同步服务搭建(http json方式交互数据) | 3d | 2015-09-10 08:30 | 2015-09-14 17:00 | 18 |  |  | 0d |
| 21 | 1.1.8.2 | 梳理同步逻辑(同步逻辑准确性、健壮性) | 2.5d | 2015-09-15 08:30 | 2015-09-17 13:15 | 20 |  |  | 0d |
| 22 | 1.1.8.3 | **移动端数据同步架构搭建** | 3.5d | 2015-09-17 13:15 | 2015-09-22 17:00 |  |  |  | 0d |
| 23 | 1.1.8.3.1 | UI界面布局 | 2d | 2015-09-17 13:15 | 2015-09-21 13:15 | 21 |  |  | 0d |
| 24 | 1.1.8.3.2 | 实现同步示例 | 1.5d | 2015-09-21 13:15 | 2015-09-22 17:00 | 23 |  |  | 0d |

| ID | WBS | Task | Duration | Start | Finish | Predecessors | Total slack | Constraint |
| --- | --- | --- | --- | --- | --- | --- | --- | --- |
| 25 | 1.1.9 | **表单校验框架** | 3d | 2015-09-23 08:30 | 2015-09-25 17:00 |  | 0d |  |
| 26 | 1.1.9.1 | 表单校验功能封装 | 2d | 2015-09-23 08:30 | 2015-09-24 17:00 | 24 | 0d |  |
| 27 | 1.1.9.2 | 实现校验示例 | 1d | 2015-09-25 08:30 | 2015-09-25 17:00 | 26 | 0d |  |
| 28 | 1.1.10 | 测试修改 | 10d | 2015-09-28 08:30 | 2015-10-15 17:00 | 27 | 0d |  |
| 29 | 1.2 | **用户登录** | 2d | 2015-10-16 08:30 | 2015-10-19 17:00 |  | 0d |  |
| 30 | 1.2.1 | 登录UI布局 | 0.5d | 2015-10-16 08:30 | 2015-10-16 13:15 | 28 | 0d |  |
| 31 | 1.2.2 | 用户信息同步 | 0.5d | 2015-10-16 13:15 | 2015-10-16 17:00 | 30 | 0d |  |
| 32 | 1.2.3 | 实现登录功能 | 0.5d | 2015-10-19 08:30 | 2015-10-19 13:15 | 31 | 0d |  |
| 33 | 1.2.4 | 实现退出登录功能 | 0.5d | 2015-10-19 13:15 | 2015-10-19 17:00 | 32 | 0d |  |
| 34 | 1.3 | **科室选择** | 3.5d | 2015-10-20 08:30 | 2015-10-23 13:15 |  | 0d |  |
| 35 | 1.3.1 | 科室UI布局 | 1d | 2015-10-20 08:30 | 2015-10-20 17:00 | 33 | 0d |  |
| 36 | 1.3.2 | 科室信息同步 | 0.5d | 2015-10-21 08:30 | 2015-10-21 13:15 | 35 | 0d |  |
| 37 | 1.3.3 | 床位信息同步 | 0.5d | 2015-10-21 13:15 | 2015-10-21 17:00 | 36 | 0d | start no earlier than 2015-09-23 13:15 |
| 38 | 1.3.4 | 科室列表展示 | 0.5d | 2015-10-22 08:30 | 2015-10-22 13:15 | 37 | 0d |  |
| 39 | 1.3.5 | 选择科室进入患者列表 | 0.5d | 2015-10-22 13:15 | 2015-10-22 17:00 | 38 | 0d |  |
| 40 | 1.3.6 | 保留上次选择的科室，下次登录时直接进入该科室 | 0.5d | 2015-10-23 08:30 | 2015-10-23 13:15 | 39 | 0d |  |
| 41 | 1.4 | **患者列表** | 4d | 2015-10-23 13:15 | 2015-10-29 13:15 |  | 0d |  |
| 42 | 1.4.1 | 患者列表、查询UI布局 | 1.5d | 2015-10-23 13:15 | 2015-10-26 17:00 | 40 | 0d |  |
| 43 | 1.4.2 | 患者信息同步 | 0.5d | 2015-10-27 08:30 | 2015-10-27 13:15 | 42 | 0d |  |
| 44 | 1.4.3 | 查询患者 | 0.5d | 2015-10-27 13:15 | 2015-10-27 17:00 | 43 | 0d |  |
| 45 | 1.4.4 | 列表展示：住院号、床号、患者姓名、临床医生、疾病字段 | 0.5d | 2015-10-28 08:30 | 2015-10-28 13:15 | 44 | 0d |  |
| 46 | 1.4.5 | 击查房按钮进入查房界面 | 0.5d | 2015-10-28 13:15 | 2015-10-28 17:00 | 45 | 0d |  |
| 47 | 1.4.6 | 点击筛查按钮，进入问卷筛查界面 | 0.5d | 2015-10-29 08:30 | 2015-10-29 13:15 | 46 | 0d |  |
| 48 | 1.5 | **患者信息** | 3d | 2015-10-29 13:15 | 2015-11-03 13:15 |  | 0d |  |
| 49 | 1.5.1 | **患者信息UI布局** | 1.5d | 2015-10-29 13:15 | 2015-10-30 17:00 |  | 0d |  |
| 50 | 1.5.1.1 | 基本信息(身高、体重、年龄……) | 0.5d | 2015-10-29 13:15 | 2015-10-29 17:00 | 47 | 0d |  |
| 51 | 1.5.1.2 | 诊疗信息(科室、床号、临床医生、主管营养师……) | 0.5d | 2015-10-30 08:30 | 2015-10-30 13:15 | 50 | 0d |  |
| 52 | 1.5.1.3 | 其它信息(主诉、病史、临床治疗、临床诊断) | 0.5d | 2015-10-30 13:15 | 2015-10-30 17:00 | 51 | 0d |  |
| 53 | 1.5.2 | 查看患者信息 | 0.5d | 2015-11-02 08:30 | 2015-11-02 13:15 | 52 | 0d |  |
| 54 | 1.5.3 | 新建患者 | 0.5d | 2015-11-02 13:15 | 2015-11-02 17:00 | 53 | 0d |  |
| 55 | 1.5.4 | 编辑患者信息 | 0.5d | 2015-11-03 08:30 | 2015-11-03 13:15 | 54 | 0d |  |

| ID | WBS | Task | Duration | Start | Finish | Predecessors | Total slack | Constraint |
| --- | --- | --- | --- | --- | --- | --- | --- | --- |
| 56 | 1.6 | **筛查** | 6.5d | 2015-11-03 13:15 | 2015-11-11 17:00 |  | 0d |  |
| 57 | 1.6.1 | 问卷UI布局 | 1d | 2015-11-03 13:15 | 2015-11-04 13:15 | 55 | 0d |  |
| 58 | 1.6.2 | 调查问卷同步 | 0.5d | 2015-11-04 13:15 | 2015-11-04 17:00 | 57 | 0d | start no earlier than 2015-10-07 13:15 |
| 59 | 1.6.3 | **NRS-2002、PG-SGA** | 5d | 2015-11-05 08:30 | 2015-11-11 17:00 |  | 0d |  |
| 60 | 1.6.3.1 | 问卷列表展示 | 0.5d | 2015-11-05 08:30 | 2015-11-05 13:15 | 58 | 0d |  |
| 61 | 1.6.3.2 | 新建问卷 | 1.5d | 2015-11-05 13:15 | 2015-11-06 17:00 | 60 | 0d |  |
| 62 | 1.6.3.3 | **提交问卷** | 1d | 2015-11-09 08:30 | 2015-11-09 17:00 |  | 0d |  |
| 63 | 1.6.3.3.1 | 计算评分结果 | 0.5d | 2015-11-09 08:30 | 2015-11-09 13:15 | 61 | 0d |  |
| 64 | 1.6.3.3.2 | 备注不接受营养治疗的原因 | 0.5d | 2015-11-09 13:15 | 2015-11-09 17:00 | 63 | 0d |  |
| 65 | 1.6.3.4 | 编辑问卷(已提交不允许编辑) | 1.5d | 2015-11-10 08:30 | 2015-11-11 13:15 | 64 | 0d |  |
| 66 | 1.6.3.5 | 删除问卷(已提交不允许删) | 0.5d | 2015-11-11 13:15 | 2015-11-11 17:00 | 65 | 0d |  |
| 67 | 1.7 | 第一阶段试用 | 23d | 2015-11-12 08:30 | 2015-12-14 17:00 | 66 | 8.7d | start no earlier than 2015-11-11 08:00 |
| 68 | 1.8 | **查房** | 32d | 2015-11-12 08:30 | 2015-12-25 17:00 |  | 0d |  |
| 69 | 1.8.1 | **查房记录** | 3.5d | 2015-11-12 08:30 | 2015-11-17 13:15 |  | 0d |  |
| 70 | 1.8.1.1 | **医嘱执行情况、消化症状、体格检查、身体测量、液体丢失量** | 3.5d | 2015-11-12 08:30 | 2015-11-17 13:15 |  | 0d |  |
| 71 | 1.8.1.1.1 | UI布局 | 1d | 2015-11-12 08:30 | 2015-11-12 17:00 | 66 | 0d |  |
| 72 | 1.8.1.1.2 | 查房记录同步 | 0.5d | 2015-11-13 08:30 | 2015-11-13 13:15 | 71 | 0d |  |
| 73 | 1.8.1.1.3 | 列表展示 | 0.5d | 2015-11-13 13:15 | 2015-11-13 17:00 | 72 | 0d |  |
| 74 | 1.8.1.1.4 | 新建记录 | 0.5d | 2015-11-16 08:30 | 2015-11-16 13:15 | 73 | 0d |  |
| 75 | 1.8.1.1.5 | 删除记录 | 0.5d | 2015-11-16 13:15 | 2015-11-16 17:00 | 74 | 0d |  |
| 76 | 1.8.1.1.6 | 编辑记录 | 0.5d | 2015-11-17 08:30 | 2015-11-17 13:15 | 75 | 0d |  |
| 77 | 1.8.2 | **膳食记录** | 7.5d | 2015-11-17 13:15 | 2015-11-26 17:00 |  | 0d |  |
| 78 | 1.8.2.1 | UI布局 | 1d | 2015-11-17 13:15 | 2015-11-18 13:15 | 76 | 0d |  |
| 79 | 1.8.2.2 | 膳食记录同步 | 1d | 2015-11-18 13:15 | 2015-11-19 13:15 | 78 | 0d |  |
| 80 | 1.8.2.3 | 按日期段查询 | 0.5d | 2015-11-19 13:15 | 2015-11-19 17:00 | 79 | 0d |  |
| 81 | 1.8.2.4 | 列表展示 | 1d | 2015-11-20 08:30 | 2015-11-20 17:00 | 80 | 0d |  |
| 82 | 1.8.2.5 | 新建 | 1.5d | 2015-11-23 08:30 | 2015-11-24 13:15 | 81 | 0d |  |
| 83 | 1.8.2.6 | 编辑 | 1.5d | 2015-11-24 13:15 | 2015-11-25 17:00 | 82 | 0d |  |
| 84 | 1.8.2.7 | 删除 | 0.5d | 2015-11-26 08:30 | 2015-11-26 13:15 | 83 | 0d |  |
| 85 | 1.8.2.8 | 计算总能量 | 0.5d | 2015-11-26 13:15 | 2015-11-26 17:00 | 84 | 0d |  |

| ID | WBS | Task | Duration | Start | Finish | Predecessors | Total slack | Free slack | Constraint |
| --- | --- | --- | --- | --- | --- | --- | --- | --- | --- |
| 86 | 1.8.3 | **制定医嘱** | 12d | 2015-11-27 08:30 | 2015-12-14 17:00 |  | 0d |  |  |
| 87 | 1.8.3.1 | **肠内、膳食** | 12d | 2015-11-27 08:30 | 2015-12-14 17:00 |  | 0d |  |  |
| 88 | 1.8.3.1.1 | UI布局 | 2d | 2015-11-27 08:30 | 2015-11-30 17:00 | 85 | 0d |  |  |
| 89 | 1.8.3.1.2 | 肠内营养制剂同步 | 0.5d | 2015-12-01 08:30 | 2015-12-01 13:15 | 88 | 0d |  |  |
| 90 | 1.8.3.1.3 | 医嘱同步 | 1d | 2015-12-01 13:15 | 2015-12-02 13:15 | 89 | 0d |  |  |
| 91 | 1.8.3.1.4 | RNIs、AIs、ULs同步(计算推荐量时需要) | 0.5d | 2015-12-02 13:15 | 2015-12-02 17:00 | 90 | 0d |  |  |
| 92 | 1.8.3.1.5 | 中国食物营养成分同步 | 0.5d | 2015-12-03 08:30 | 2015-12-03 13:15 | 91 | 0d |  |  |
| 93 | 1.8.3.1.6 | 单一食物同步 | 0.5d | 2015-12-03 13:15 | 2015-12-03 17:00 | 92 | 0d |  |  |
| 94 | 1.8.3.1.7 | 组合套餐同步 | 0.5d | 2015-12-04 08:30 | 2015-12-04 13:15 | 93 | 0d |  |  |
| 95 | 1.8.3.1.8 | 医嘱列表 | 1d | 2015-12-04 13:15 | 2015-12-07 13:15 | 94 | 0d |  |  |
| 96 | 1.8.3.1.9 | 新建医嘱 | 1.5d | 2015-12-07 13:15 | 2015-12-08 17:00 | 95 | 0d |  |  |
| 97 | 1.8.3.1.10 | 编辑医嘱 | 1.5d | 2015-12-09 08:30 | 2015-12-10 13:15 | 96 | 0d |  |  |
| 98 | 1.8.3.1.11 | 删除医嘱 | 1d | 2015-12-10 13:15 | 2015-12-11 13:15 | 97 | 0d |  |  |
| 99 | 1.8.3.1.12 | 肠内热氮比计算 | 0.5d | 2015-12-11 13:15 | 2015-12-11 17:00 | 98 | 0d |  |  |
| 100 | 1.8.3.1.13 | 总能量计算 | 1d | 2015-12-14 08:30 | 2015-12-14 17:00 | 99 | 0d |  |  |
| 101 | 1.8.4 | 第二阶段试用 | 9d | 2015-12-15 08:30 | 2015-12-25 17:00 | 100 | 0d |  | finish no earlier than 2015-12-25 17:00 |
| 102 | 1.8.5 | **查看人体成分分析** | 5.2d | 2015-12-15 08:30 | 2015-12-22 10:00 |  | 0.3d |  |  |
| 103 | 1.8.5.1 | UI布局 | 1d | 2015-12-15 08:30 | 2015-12-15 17:00 | 100 | 0.3d | 0d |  |
| 104 | 1.8.5.2 | 人体成分数据同步 | 1d | 2015-12-16 08:30 | 2015-12-16 17:00 | 103 | 0.3d | 0d |  |
| 105 | 1.8.5.3 | 列表展示 | 1d | 2015-12-17 08:30 | 2015-12-17 17:00 | 104 | 0.3d | 0d |  |
| 106 | 1.8.5.4 | **报告单查看** | 2.2d | 2015-12-18 08:30 | 2015-12-22 10:00 |  | 0.3d |  |  |
| 107 | 1.8.5.4.1 | 患者基本信息、健康评分 | 0.2d | 2015-12-18 08:30 | 2015-12-18 10:00 | 105 | 0.3d | 0d |  |
| 108 | 1.8.5.4.2 | 人体成分 | 0.2d | 2015-12-18 10:00 | 2015-12-18 11:30 | 107 | 0.3d | 0d |  |
| 109 | 1.8.5.4.3 | 基本评估 | 0.2d | 2015-12-18 12:30 | 2015-12-18 14:00 | 108 | 0.3d | 0d |  |
| 110 | 1.8.5.4.4 | 内脏脂肪分析 | 0.2d | 2015-12-18 14:00 | 2015-12-18 15:30 | 109 | 0.3d | 0d |  |
| 111 | 1.8.5.4.5 | 肌肉分析 | 0.2d | 2015-12-18 15:30 | 2015-12-18 17:00 | 110 | 0.3d | 0d |  |
| 112 | 1.8.5.4.6 | 肥胖分析 | 0.2d | 2015-12-21 08:30 | 2015-12-21 10:00 | 111 | 0.3d | 0d |  |
| 113 | 1.8.5.4.7 | 营养评估 | 0.2d | 2015-12-21 10:00 | 2015-12-21 11:30 | 112 | 0.3d | 0d |  |
| 114 | 1.8.5.4.8 | 电阻抗测量值 | 0.2d | 2015-12-21 12:30 | 2015-12-21 14:00 | 113 | 0.3d | 0d |  |
| 115 | 1.8.5.4.9 | 节段分析 | 0.2d | 2015-12-21 14:00 | 2015-12-21 15:30 | 114 | 0.3d | 0d |  |
| 116 | 1.8.5.4.10 | 体重管理 | 0.2d | 2015-12-21 15:30 | 2015-12-21 17:00 | 115 | 0.3d | 0d |  |
| 117 | 1.8.5.4.11 | 体型判定 | 0.2d | 2015-12-22 08:30 | 2015-12-22 10:00 | 116 | 0.3d | 0d |  |

| ID | WBS | Task | Duration | Start | Finish | Predecessors | Total slack | Free slack |
| --- | --- | --- | --- | --- | --- | --- | --- | --- |
| 118 | 1.8.6 | **查看实验室检查** | 3.5d | 2015-12-22 10:00 | 2015-12-25 14:45 |  | 0.3d |  |
| 119 | 1.8.6.1 | UI布局 | 1.5d | 2015-12-22 10:00 | 2015-12-23 14:45 | 117 | 0.3d | 0d |
| 120 | 1.8.6.2 | 实验室检查数据同步 | 1d | 2015-12-23 14:45 | 2015-12-24 14:45 | 119 | 0.3d | 0d |
| 121 | 1.8.6.3 | 实验室检查查看 | 1d | 2015-12-24 14:45 | 2015-12-25 14:45 | 120 | 0.3d |  |
